# Hitachi Plan

Schedule from MS Project, 2011-09-07 to 2011-09-27.

## Calendars

- Standard: Mon-Fri 08:00-12:00, 13:00-17:00; Sat-Sun off.

## Resources

| Resource |
| --- |
| Hoanh |
| Ngu |
| HuyCuong |
| Nguyen |
| Nam |

## Schedule

| ID | WBS | Task | Duration | Start | Finish | Predecessors | Total slack | Free slack | Constraint | Resources | Work | Testing |
| --- | --- | --- | --- | --- | --- | --- | --- | --- | --- | --- | --- | --- |
| 1 | 1 | **InHourseSlipMaking Project scheduce** | 15d? | 2011-09-07 | 2011-09-27 |  | 0d |  |  |  | 280h |  |
| 2 | 1.1 | Review Basic Document | 1d? | 2011-09-07 | 2011-09-07 |  | 6d | 0d | start no earlier than 2011-09-07 | Nam; Ngu | 16h |  |
| 3 | 1.2 | Create project in CVS, Implement Domain,Design database,Create sharepoint list | 2d | 2011-09-08 | 2011-09-09 | 2 | 8d |  |  | Nam; Ngu | 32h | HuyCuong |
| 4 | 1.3 | **F01_InputSalesInfomation** | 7d | 2011-09-12 | 2011-09-20 |  | 5d |  |  |  | 72h |  |
| 5 | 1.3.1 | Test Case Design | 2d | 2011-09-12 | 2011-09-13 |  | 4d |  | start no earlier than 2011-09-12 | Hoanh | 16h |  |
| 6 | 1.3.2 | Coding | 5d | 2011-09-12 | 2011-09-16 | 3 | 5d | 0d | start no earlier than 2011-09-12 | Ngu | 40h |  |
| 7 | 1.3.3 | Testing | 2d | 2011-09-19 | 2011-09-20 | 6, 5 | 5d |  | start no earlier than 2011-09-12 | Hoanh | 16h |  |
| 8 | 1.4 | **F02_InputWorkingTime** | 7d | 2011-09-12 | 2011-09-20 |  | 5d |  |  |  | 72h |  |
| 9 | 1.4.1 | Test Case Design | 2d | 2011-09-15 | 2011-09-16 |  | 7d | 0d | start no earlier than 2011-09-15 | HuyCuong | 16h |  |
| 10 | 1.4.2 | Coding | 5d | 2011-09-12 | 2011-09-16 | 3 | 7d | 1d | start no earlier than 2011-09-12 | Nam | 40h |  |
| 11 | 1.4.3 | Testing | 2d | 2011-09-19 | 2011-09-20 | 9, 10 | 7d |  | start no earlier than 2011-09-12 | HuyCuong | 16h |  |
| 12 | 1.5 | **F03_CreateExcel-UpdateSPList** | 5d | 2011-09-21 | 2011-09-27 |  | 0d |  |  |  | 56h |  |
| 13 | 1.5.1 | Test Case Design | 2d | 2011-09-22 | 2011-09-23 |  | 0d |  | start no earlier than 2011-09-22 | Nguyen | 16h |  |
| 14 | 1.5.2 | Coding | 3d | 2011-09-21 | 2011-09-23 |  | 0d |  | start no earlier than 2011-09-21 | Nam | 24h |  |
| 15 | 1.5.3 | Testing | 2d | 2011-09-26 | 2011-09-27 | 13, 14 | 0d |  |  | Nguyen | 16h |  |
| 16 | 1.6 | Set Up Guide | 2d | 2011-09-26 | 2011-09-27 |  | 0d |  | start no earlier than 2011-09-26 | Ngu; Nam | 32h |  |
